# Afghan Governmental Intranet

How a schedule from ProjectLibre changed from version to version. A marks actual dates.

## Version 1 (saved 2020-11-29)

| ID | WBS | Task | Duration | Start | Finish | Predecessors | Constraint |
| --- | --- | --- | --- | --- | --- | --- | --- |
| 1 | 1 | **Afghan Governmental Intranet** | 794.93d | 2020-02-03 | 2023-02-17 |  | start no earlier than 2020-02-15 |
| 2 | 1.1 | **Project Preparation** | 65.6d | 2020-02-03 | 2020-05-04 |  |  |
| 3 | 1.1.1 | **Project Specification** | 36.6d | 2020-02-03 | 2020-03-24 |  |  |
| 4 |  | Project Discussion with MCIT, ATRA, and AFTEL | 14d | 2020-02-03 | 2020-02-20 |  |  |
| 5 |  | Lawful Negotiations | 7d | 2020-02-21 | 2020-03-02 | 4 |  |
| 6 |  | Budget Negotiations | 7d | 2020-03-03 | 2020-03-11 | 5 |  |
| 7 |  | Dealing with New Ideas | 5d | 2020-03-12 | 2020-03-18 | 4, 5, 6 |  |
| 8 |  | Finalizing the Project Scope | 3.6d | 2020-03-19 | 2020-03-24 | 4, 5, 6, 7 |  |
| 9 | 1.1.2 | **Project Planning** | 29d | 2020-03-24 | 2020-05-04 | 3 |  |
| 10 |  | Risk Management Plan | 10d | 2020-03-24 | 2020-04-07 | 8 |  |
| 11 |  | Requirements and Change Management Plan | 12d | 2020-04-07 | 2020-04-23 | 10 |  |
| 12 |  | Team Setup | 7d | 2020-04-23 | 2020-05-04 | 8, 10, 11 |  |
| 13 |  | Project Startup | 0d | 2020-05-04 | 2020-05-04 | 3, 9 |  |
| 14 | 1.2 | **Requirements** | 216.33d | 2020-05-04 | 2021-03-02 | 2 |  |
| 15 | 1.2.1 | **Requirements Gathering** | 22d | 2020-05-04 | 2020-06-03 |  |  |
| 16 |  | Meetings with MCIT | 3d | 2020-05-04 | 2020-05-07 | 12 |  |
| 17 |  | Meetings with ATRA | 2d | 2020-05-04 | 2020-05-06 | 16SS |  |
| 18 |  | Meetings with AFTEL | 2d | 2020-05-04 | 2020-05-06 | 17SS |  |
| 19 |  | Meetings with NIXA | 4d | 2020-05-04 | 2020-05-08 | 18SS |  |
| 20 |  | Meetings with MoF, MoIA | 4d | 2020-05-08 | 2020-05-14 | 19 |  |
| 21 |  | Structured Interviews | 7d | 2020-05-14 | 2020-05-25 | 19, 20 |  |
| 22 |  | Questionnaires | 14d | 2020-05-14 | 2020-06-03 | 21SS |  |
| 23 |  | Observations | 7d | 2020-05-25 | 2020-06-03 | 22FF |  |
| 24 | 1.2.2 | **Afghan OFC Infrastructure Analysis** | 157d | 2020-06-03 | 2021-01-08 | 15 |  |
| 25 |  | Data Gathering from All 34 Provinces | 136d | 2020-06-03 | 2020-12-10 | 16SS |  |
| 26 |  | Technical Analysis of the Afghan OFC Infrastructure | 14d | 2020-12-10 | 2020-12-30 | 25 |  |
| 27 |  | Negotiating the Project with Local Governmental Institutions | 21d | 2020-11-11 | 2020-12-10 | 25FF |  |
| 28 |  | Final Analysis of the Gathered Data | 14d | 2020-12-10 | 2020-12-30 | 27 |  |
| 29 |  | Feasibility Study of the Afghan OFC Infrastructure for this Project | 7d | 2020-12-30 | 2021-01-08 | 28 |  |
| 30 | 1.2.3 | **Requirements Analysis** | 37.33d | 2021-01-08 | 2021-03-02 | 24 |  |
| 31 |  | Technical Analysis | 21d | 2021-01-08 | 2021-02-08 | 29 |  |
| 32 |  | Final Refinements and Approval | 9.33d | 2021-02-08 | 2021-02-19 | 31 |  |
| 33 |  | System Definition | 7d | 2021-02-19 | 2021-03-02 | 29, 31, 32 |  |
| 34 |  | Final Requirements Document | 0d | 2021-03-02 | 2021-03-02 | 15, 24, 30 |  |
| 35 |  | A Technical Analysis and Feasibility Study of the Afghan OFC Infrastructure for this Project | 0d | 2021-03-02 | 2021-03-02 | 34 |  |
| 36 | 1.3 | **Solution Design** | 41d | 2021-03-02 | 2021-04-28 | 14 |  |
| 37 |  | Requirements Review | 6d | 2021-03-02 | 2021-03-10 | 33 |  |
| 38 |  | Use Case, Sequence, and Interaction Diagrams | 14d | 2021-03-10 | 2021-03-30 | 37 |  |
| 39 |  | Topology Design (Based on the Afghan OFC Infrastructure) | 21d | 2021-03-10 | 2021-04-08 | 38SS |  |
| 40 |  | Core, Regional, and Local Data Centers Design | 21d | 2021-03-10 | 2021-04-08 | 37 |  |
| 41 |  | Network Service Software Design | 14d | 2021-04-08 | 2021-04-28 | 38, 40 |  |
| 42 |  | Final Design Documentation | 0d | 2021-04-28 | 2021-04-28 | 41 |  |
| 43 | 1.4 | **Realization** | 237d | 2021-04-28 | 2022-03-25 | 36 |  |
| 44 |  | Setting Up the Core, Regional, and Local Data Centers, in All 34 Provinces | 170d | 2021-04-28 | 2021-12-22 | 39, 40 |  |
| 45 |  | Connecting the Data Centers with the Afghan OFC Infrastructure | 30d | 2021-12-22 | 2022-02-02 | 44 |  |
| 46 |  | Creating a Network for the Designed Topology, over the OFC Infrastructure | 30d | 2022-02-02 | 2022-03-16 | 45 |  |
| 47 |  | Connecting the Data Centers with Each Other | 7d | 2022-03-16 | 2022-03-25 | 46 |  |
| 48 |  | Configuring the Network Service Software | 21d | 2021-04-28 | 2021-05-27 | 44SS |  |
| 49 |  | Implemented the Designed Topology | 0d | 2021-04-28 | 2021-04-28 |  |  |
| 50 |  | Network Service Software Configured | 0d | 2021-04-28 | 2021-04-28 | 49 |  |
| 51 | 1.5 | **Testing** | 190d | 2022-03-25 | 2022-12-16 | 43 |  |
| 52 |  | Deployment Testing | 180d | 2022-03-25 | 2022-12-02 |  |  |
| 53 |  | Testing the Available Bandwidth inside the Network | 2d | 2022-12-02 | 2022-12-06 | 52 |  |
| 54 |  | Testing Security Parameters | 2d | 2022-12-02 | 2022-12-06 | 53SS |  |
| 55 |  | Testing Partial Mesh Topology | 3d | 2022-12-02 | 2022-12-07 | 53SS |  |
| 56 |  | Integration Testing | 7d | 2022-12-07 | 2022-12-16 | 55 |  |
| 57 |  | Testing Complete; Final Approval | 0d | 2022-12-16 | 2022-12-16 | 56 |  |
| 58 | 1.6 | **Maintenance and Optimization** | 45d | 2022-12-16 | 2023-02-17 | 51 |  |
| 59 |  | Monitoring the Network | 45d | 2022-12-16 | 2023-02-17 | 56SS |  |
| 60 |  | Changing the Topology for Further Enhancing the Network | 45d | 2022-12-16 | 2023-02-17 | 59SS |  |
| 61 |  | Establishing New Logical Routes between Provinces, over the OFC Infrastructure | 45d | 2022-12-16 | 2023-02-17 | 60SS |  |

## Version 2 (saved 2020-11-29)

Last finish 2023-02-17 → 2023-03-03 (+14d).

Changed:

| ID | Task | Start | Finish |
| --- | --- | --- | --- |
| 1 | **Afghan Governmental Intranet** | 2020-02-03 → 2020-02-17 (+14d) | 2023-02-17 → 2023-03-03 (+14d) |
| 2 | **Project Preparation** | 2020-02-03 → 2020-02-17 (+14d) | 2020-05-04 → 2020-05-18 (+14d) |
| 3 | **Project Specification** | 2020-02-03 → 2020-02-17 (+14d) | 2020-03-24 → 2020-04-07 (+14d) |
| 4 | Project Discussion with MCIT, ATRA, and AFTEL | 2020-02-03 → 2020-02-17 (+14d) | 2020-02-20 → 2020-03-05 (+14d) |
| 5 | Lawful Negotiations | 2020-02-21 → 2020-03-06 (+14d) | 2020-03-02 → 2020-03-16 (+14d) |
| 6 | Budget Negotiations | 2020-03-03 → 2020-03-17 (+14d) | 2020-03-11 → 2020-03-25 (+14d) |
| 7 | Dealing with New Ideas | 2020-03-12 → 2020-03-26 (+14d) | 2020-03-18 → 2020-04-01 (+14d) |
| 8 | Finalizing the Project Scope | 2020-03-19 → 2020-04-02 (+14d) | 2020-03-24 → 2020-04-07 (+14d) |
| 9 | **Project Planning** | 2020-03-24 → 2020-04-07 (+14d) | 2020-05-04 → 2020-05-18 (+14d) |
| 10 | Risk Management Plan | 2020-03-24 → 2020-04-07 (+14d) | 2020-04-07 → 2020-04-21 (+14d) |
| 11 | Requirements and Change Management Plan | 2020-04-07 → 2020-04-21 (+14d) | 2020-04-23 → 2020-05-07 (+14d) |
| 12 | Team Setup | 2020-04-23 → 2020-05-07 (+14d) | 2020-05-04 → 2020-05-18 (+14d) |
| 13 | Project Startup | 2020-05-04 → 2020-05-18 (+14d) | 2020-05-04 → 2020-05-18 (+14d) |
| 14 | **Requirements** | 2020-05-04 → 2020-05-18 (+14d) | 2021-03-02 → 2021-03-16 (+14d) |
| 15 | **Requirements Gathering** | 2020-05-04 → 2020-05-18 (+14d) | 2020-06-03 → 2020-06-17 (+14d) |
| 16 | Meetings with MCIT | 2020-05-04 → 2020-05-18 (+14d) | 2020-05-07 → 2020-05-21 (+14d) |
| 17 | Meetings with ATRA | 2020-05-04 → 2020-05-18 (+14d) | 2020-05-06 → 2020-05-20 (+14d) |
| 18 | Meetings with AFTEL | 2020-05-04 → 2020-05-18 (+14d) | 2020-05-06 → 2020-05-20 (+14d) |
| 19 | Meetings with NIXA | 2020-05-04 → 2020-05-18 (+14d) | 2020-05-08 → 2020-05-22 (+14d) |
| 20 | Meetings with MoF, MoIA | 2020-05-08 → 2020-05-22 (+14d) | 2020-05-14 → 2020-05-28 (+14d) |
| 21 | Structured Interviews | 2020-05-14 → 2020-05-28 (+14d) | 2020-05-25 → 2020-06-08 (+14d) |
| 22 | Questionnaires | 2020-05-14 → 2020-05-28 (+14d) | 2020-06-03 → 2020-06-17 (+14d) |
| 23 | Observations | 2020-05-25 → 2020-06-08 (+14d) | 2020-06-03 → 2020-06-17 (+14d) |
| 24 | **Afghan OFC Infrastructure Analysis** | 2020-06-03 → 2020-06-17 (+14d) | 2021-01-08 → 2021-01-22 (+14d) |
| 25 | Data Gathering from All 34 Provinces | 2020-06-03 → 2020-06-17 (+14d) | 2020-12-10 → 2020-12-24 (+14d) |
| 26 | Technical Analysis of the Afghan OFC Infrastructure | 2020-12-10 → 2020-12-24 (+14d) | 2020-12-30 → 2021-01-13 (+14d) |
| 27 | Negotiating the Project with Local Governmental Institutions | 2020-11-11 → 2020-11-25 (+14d) | 2020-12-10 → 2020-12-24 (+14d) |
| 28 | Final Analysis of the Gathered Data | 2020-12-10 → 2020-12-24 (+14d) | 2020-12-30 → 2021-01-13 (+14d) |
| 29 | Feasibility Study of the Afghan OFC Infrastructure for this Project | 2020-12-30 → 2021-01-13 (+14d) | 2021-01-08 → 2021-01-22 (+14d) |
| 30 | **Requirements Analysis** | 2021-01-08 → 2021-01-22 (+14d) | 2021-03-02 → 2021-03-16 (+14d) |
| 31 | Technical Analysis | 2021-01-08 → 2021-01-22 (+14d) | 2021-02-08 → 2021-02-22 (+14d) |
| 32 | Final Refinements and Approval | 2021-02-08 → 2021-02-22 (+14d) | 2021-02-19 → 2021-03-05 (+14d) |
| 33 | System Definition | 2021-02-19 → 2021-03-05 (+14d) | 2021-03-02 → 2021-03-16 (+14d) |
| 34 | Final Requirements Document | 2021-03-02 → 2021-03-16 (+14d) | 2021-03-02 → 2021-03-16 (+14d) |
| 35 | A Technical Analysis and Feasibility Study of the Afghan OFC Infrastructure for this Project | 2021-03-02 → 2021-03-16 (+14d) | 2021-03-02 → 2021-03-16 (+14d) |
| 36 | **Solution Design** | 2021-03-02 → 2021-03-16 (+14d) | 2021-04-28 → 2021-05-12 (+14d) |
| 37 | Requirements Review | 2021-03-02 → 2021-03-16 (+14d) | 2021-03-10 → 2021-03-24 (+14d) |
| 38 | Use Case, Sequence, and Interaction Diagrams | 2021-03-10 → 2021-03-24 (+14d) | 2021-03-30 → 2021-04-13 (+14d) |
| 39 | Topology Design (Based on the Afghan OFC Infrastructure) | 2021-03-10 → 2021-03-24 (+14d) | 2021-04-08 → 2021-04-22 (+14d) |
| 40 | Core, Regional, and Local Data Centers Design | 2021-03-10 → 2021-03-24 (+14d) | 2021-04-08 → 2021-04-22 (+14d) |
| 41 | Network Service Software Design | 2021-04-08 → 2021-04-22 (+14d) | 2021-04-28 → 2021-05-12 (+14d) |
| 42 | Final Design Documentation | 2021-04-28 → 2021-05-12 (+14d) | 2021-04-28 → 2021-05-12 (+14d) |
| 43 | **Realization** | 2021-04-28 → 2021-05-12 (+14d) | 2022-03-25 → 2022-04-08 (+14d) |
| 44 | Setting Up the Core, Regional, and Local Data Centers, in All 34 Provinces | 2021-04-28 → 2021-05-12 (+14d) | 2021-12-22 → 2022-01-05 (+14d) |
| 45 | Connecting the Data Centers with the Afghan OFC Infrastructure | 2021-12-22 → 2022-01-05 (+14d) | 2022-02-02 → 2022-02-16 (+14d) |
| 46 | Creating a Network for the Designed Topology, over the OFC Infrastructure | 2022-02-02 → 2022-02-16 (+14d) | 2022-03-16 → 2022-03-30 (+14d) |
| 47 | Connecting the Data Centers with Each Other | 2022-03-16 → 2022-03-30 (+14d) | 2022-03-25 → 2022-04-08 (+14d) |
| 48 | Configuring the Network Service Software | 2021-04-28 → 2021-05-12 (+14d) | 2021-05-27 → 2021-06-10 (+14d) |
| 49 | Implemented the Designed Topology | 2021-04-28 → 2021-05-12 (+14d) | 2021-04-28 → 2021-05-12 (+14d) |
| 50 | Network Service Software Configured | 2021-04-28 → 2021-05-12 (+14d) | 2021-04-28 → 2021-05-12 (+14d) |
| 51 | **Testing** | 2022-03-25 → 2022-04-08 (+14d) | 2022-12-16 → 2022-12-30 (+14d) |
| 52 | Deployment Testing | 2022-03-25 → 2022-04-08 (+14d) | 2022-12-02 → 2022-12-16 (+14d) |
| 53 | Testing the Available Bandwidth inside the Network | 2022-12-02 → 2022-12-16 (+14d) | 2022-12-06 → 2022-12-20 (+14d) |
| 54 | Testing Security Parameters | 2022-12-02 → 2022-12-16 (+14d) | 2022-12-06 → 2022-12-20 (+14d) |
| 55 | Testing Partial Mesh Topology | 2022-12-02 → 2022-12-16 (+14d) | 2022-12-07 → 2022-12-21 (+14d) |
| 56 | Integration Testing | 2022-12-07 → 2022-12-21 (+14d) | 2022-12-16 → 2022-12-30 (+14d) |
| 57 | Testing Complete; Final Approval | 2022-12-16 → 2022-12-30 (+14d) | 2022-12-16 → 2022-12-30 (+14d) |
| 58 | **Maintenance and Optimization** | 2022-12-16 → 2022-12-30 (+14d) | 2023-02-17 → 2023-03-03 (+14d) |
| 59 | Monitoring the Network | 2022-12-16 → 2022-12-30 (+14d) | 2023-02-17 → 2023-03-03 (+14d) |
| 60 | Changing the Topology for Further Enhancing the Network | 2022-12-16 → 2022-12-30 (+14d) | 2023-02-17 → 2023-03-03 (+14d) |
| 61 | Establishing New Logical Routes between Provinces, over the OFC Infrastructure | 2022-12-16 → 2022-12-30 (+14d) | 2023-02-17 → 2023-03-03 (+14d) |
